# FYP - SERIS - RAM Application

Schedule from MS Project, 2018-02-01 to 2019-01-22, 2 hours a day, A marks actual dates.
RAM App

## Calendars

- Standard: Mon-Fri 08:00-12:00, 13:00-17:00; Sat-Sun off. Exceptions (off unless hours are given): 2018-01-01 to 2019-07-08 20:00-21:00, 22:00-23:00 (2 HR/DAY working hrs, recurring).

## Resources

| Resource |
| --- |
| Kaung Myat Bo |
| Bala |
| Treza |
| Nay La |
| William |
| Sponsor |
| Agnes |

## Schedule

| ID | WBS | Task | Duration | Start | Finish | Predecessors | Complete | Constraint | Resources | Work | Actual work |
| --- | --- | --- | --- | --- | --- | --- | --- | --- | --- | --- | --- |
| 1 | 1 | **Project Initiation** | 52d | 2018-02-01 A | 2018-04-13 A |  | 100% |  |  | 428h | 428h |
| 2 | 1.1 | Setup project filing system | 7d | 2018-02-01 A | 2018-02-09 A |  | 100% |  | Nay La | 14h | 14h |
| 3 | 1.2 | Project requirement gathering | 20d | 2018-02-01 A | 2018-02-28 A |  | 100% |  | Kaung Myat Bo; Sponsor; Treza; Agnes | 160h | 160h |
| 4 | 1.3 | Project risk tracker | 5d | 2018-03-01 A | 2018-03-07 A |  | 100% | start no earlier than 2018-03-01 | Bala | 10h | 10h |
| 5 | 1.4 | Prepare WBS | 5d | 2018-03-01 A | 2018-03-07 A | 3 | 100% |  | Kaung Myat Bo | 10h | 10h |
| 6 | 1.5 | Produce project plan document | 5d | 2018-03-20 A | 2018-03-28 A | 5 | 100% | start no earlier than 2018-03-20 | Kaung Myat Bo | 10h | 10h |
| 7 | 1.6 | Review/Finalize project plan document | 2d | 2018-03-29 A | 2018-03-30 A | 6 | 100% |  | Bala; Nay La; Sponsor; Treza; William | 20h | 20h |
| 8 | 1.7 | Produce quality plan | 5d | 2018-02-12 A | 2018-02-16 A | 2 | 100% |  | Nay La | 10h | 10h |
| 9 | 1.8 | Review/Finalize quality plan | 1d | 2018-03-08 A | 2018-03-08 A | 4 | 100% |  | Bala; Kaung Myat Bo; Nay La; Treza; William | 10h | 10h |
| 10 | 1.9 | Produce User requirement specification | 10d | 2018-03-09 A | 2018-03-22 A | 9 | 100% |  | Bala | 20h | 20h |
| 11 | 1.10 | Review/Finalize User requirement specification | 2d | 2018-03-23 A | 2018-03-26 A | 10 | 100% |  | Kaung Myat Bo; Nay La; Sponsor; Treza; William | 20h | 20h |
| 12 | 1.11 | Produce Use Case Modelling survey report | 10d | 2018-03-29 A | 2018-04-11 A | 6 | 100% |  | Kaung Myat Bo | 20h | 20h |
| 13 | 1.12 | Review/Finalize Use Case Modelling survey report | 2d | 2018-04-12 A | 2018-04-13 A | 12 | 100% |  | Bala; Nay La; Sponsor; Treza; William | 20h | 20h |
| 14 | 1.13 | Produce User Interface Speficication 1 | 10d | 2018-03-09 A | 2018-03-22 A | 9 | 100% |  | Nay La | 20h | 20h |
| 15 | 1.14 | Review/Finalize User Interface Specification | 2d | 2018-03-27 A | 2018-03-28 A | 11 | 100% |  | Bala; Treza; William | 12h | 12h |
| 16 | 1.15 | Produce High Level Design Specification | 10d | 2018-03-01 A | 2018-03-15 A | 3 | 100% |  | Treza | 20h | 20h |
| 17 | 1.16 | Review/Finalize High Level Design Specification | 2d | 2018-03-16 A | 2018-03-19 A | 16 | 100% |  | Kaung Myat Bo; Sponsor; William | 12h | 12h |
| 18 | 1.17 | Exploring AWS services | 20d | 2018-03-01 A | 2018-04-10 A | 3 | 100% |  | William | 40h | 40h |
| 19 | 2 | **Build Prototype** | 9d | 2018-04-16 A | 2018-04-26 A |  | 100% |  |  | 50h | 50h |
| 20 | 2.1 | Prepare prototype | 5d | 2018-04-16 A | 2018-04-20 A | 13 | 100% |  | William; Kaung Myat Bo; Treza | 30h | 30h |
| 21 | 2.2 | Test prototype | 2d | 2018-04-23 A | 2018-04-24 A | 20 | 100% |  | Bala; Nay La | 8h | 8h |
| 22 | 2.3 | Produce Prototype Study Report | 2d | 2018-04-23 A | 2018-04-24 A | 20 | 100% |  | William | 4h | 4h |
| 23 | 2.4 | Review/Finalize Prototype Study Report | 2d | 2018-04-25 A | 2018-04-26 A | 22 | 100% |  | Treza; Bala | 8h | 8h |
| 24 | 3 | **Incorporate Audit Feedbacks** | 4d | 2018-04-27 A | 2018-05-02 A |  | 100% |  |  | 40h | 40h |
| 25 | 3.1 | Revised on Audit Comments | 1d | 2018-04-27 A | 2018-04-27 A | 23 | 100% |  | Kaung Myat Bo; Nay La; Treza; Bala; William | 10h | 10h |
| 26 | 3.2 | Prepare for presentation | 3d | 2018-04-30 A | 2018-05-02 A | 25 | 100% |  | Bala; Kaung Myat Bo; Nay La; Treza; William | 30h | 30h |

| ID | WBS | Task | Duration | Start | Finish | Predecessors | Complete | Constraint | Resources | Work | Actual work |
| --- | --- | --- | --- | --- | --- | --- | --- | --- | --- | --- | --- |
| 27 | 4 | **Analysis and Design Modelling (Increment 1)** | 32d | 2018-05-03 A | 2018-06-15 A |  | 100% |  |  | 294h | 294h |
| 28 | 4.1 | Produce Use Case Model Survey Report (Requirement) | 2d | 2018-05-03 A | 2018-05-04 A |  | 100% | start no earlier than 2018-05-03 | Kaung Myat Bo; Treza | 8h | 8h |
| 29 | 4.2 | Review/FinaliseUse Case Model Survey Report (Requirement) | 2d | 2018-05-10 A | 2018-05-11 A | 28 | 100% | start no earlier than 2018-05-10 | Bala | 4h | 4h |
| 30 | 4.3 | Identify Domain Objects/Attributes | 5d | 2018-05-03 A | 2018-05-09 A | 26 | 100% |  | Bala; Nay La; William | 30h | 30h |
| 31 | 4.4 | Produce Class Diagrams | 5d | 2018-05-07 A | 2018-05-11 A |  | 100% | start no earlier than 2018-05-07 | Kaung Myat Bo; Treza | 20h | 20h |
| 32 | 4.5 | Produce Sequence Diagrams | 20d | 2018-05-14 A | 2018-06-08 A |  | 100% | start no earlier than 2018-05-14 | William; Bala; Kaung Myat Bo; Nay La; Treza | 200h | 200h |
| 33 | 4.6 | Produce Design Model Report | 3d | 2018-06-11 A | 2018-06-13 A | 32, 30, 31 | 100% |  | William; Bala | 12h | 12h |
| 34 | 4.7 | Review/FinaliseDesign Model Report | 2d | 2018-06-14 A | 2018-06-15 A | 33 | 100% |  | Kaung Myat Bo; Treza; Bala; Nay La; William | 20h | 20h |
| 35 | 5 | **Implementation & Coding** | 52d | 2018-05-10 A | 2018-07-20 A |  | 100% |  |  | 226h | 226h |
| 36 | 5.1 | Setup necessary cloud environment | 2d | 2018-05-10 A | 2018-05-11 A |  | 100% | start no earlier than 2018-05-10 | Nay La; William | 8h | 8h |
| 37 | 5.2 | Source control plan and setup | 3d | 2018-06-11 A | 2018-06-13 A |  | 100% | start no earlier than 2018-06-11 | Kaung Myat Bo; Treza; Nay La | 18h | 18h |
| 38 | 5.3 | Backend coding | 20d | 2018-06-18 A | 2018-07-13 A | 32, 33 | 100% | start no earlier than 2018-06-18 | Treza; William | 80h | 80h |
| 39 | 5.4 | Frontend coding | 20d | 2018-06-18 A | 2018-07-13 A | 32, 33 | 100% | start no earlier than 2018-06-18 | Kaung Myat Bo; Bala | 80h | 80h |
| 40 | 5.5 | Unit testing | 2d | 2018-07-19 A | 2018-07-20 A | 41 | 100% |  | Bala; Kaung Myat Bo; Treza; William | 16h | 16h |
| 41 | 5.6 | Peer review coding | 3d | 2018-07-16 A | 2018-07-18 A | 38, 39 | 100% |  | Bala; Kaung Myat Bo; Treza; William | 24h | 24h |
| 42 | 6 | **Testing** | 51d | 2018-06-18 A | 2018-08-27 A |  | 100% |  |  | 306h | 306h |
| 43 | 6.1 | Produce System Test Plan | 5d | 2018-06-18 A | 2018-06-22 A |  | 100% | start no earlier than 2018-06-18 | Nay La | 10h | 10h |
| 44 | 6.2 | Review/FinaliseSystem Test Plan | 2d | 2018-07-23 A | 2018-07-24 A | 43 | 100% | start no earlier than 2018-07-23 | Treza; Kaung Myat Bo; Bala; Nay La; William | 20h | 20h |
| 45 | 6.3 | Perform System Testing | 3d | 2018-07-25 A | 2018-07-27 A | 44 | 100% |  | Bala; Kaung Myat Bo; Nay La; Treza; William | 30h | 30h |
| 46 | 6.4 | Bug Review/Corrective action/Rework | 2d | 2018-07-30 A | 2018-07-31 A | 45 | 100% |  | Bala; Kaung Myat Bo; Nay La; Treza; William | 20h | 20h |
| 47 | 6.5 | Prepare SIT Document | 5d | 2018-06-25 A | 2018-06-29 A |  | 100% | start no earlier than 2018-06-25 | Nay La | 10h | 10h |
| 48 | 6.6 | Review/FinaliseSIT Document | 2d | 2018-08-01 A | 2018-08-02 A | 47 | 100% | start no earlier than 2018-08-01 | Bala; Kaung Myat Bo; Nay La; Treza; William | 20h | 20h |
| 49 | 6.7 | Prepare User Acceptance Test Plan | 5d | 2018-07-02 A | 2018-07-06 A |  | 100% | start no earlier than 2018-07-02 | Nay La | 10h | 10h |
| 50 | 6.8 | Review/FinaliseAcceptance Test Plan | 2d | 2018-08-13 A | 2018-08-14 A | 49 | 100% | start no earlier than 2018-08-13 | Bala; Kaung Myat Bo; Nay La; Treza; William | 20h | 20h |
| 51 | 6.9 | Perform Integration Testing | 3d | 2018-08-03 A | 2018-08-07 A | 48 | 100% |  | Bala; Kaung Myat Bo; Nay La; Treza; William | 30h | 30h |
| 52 | 6.10 | Review Test Result and perform Corrective Action | 3d | 2018-08-08 A | 2018-08-10 A | 51 | 100% |  | Bala; Kaung Myat Bo; Nay La; Treza; William | 30h | 30h |
| 53 | 6.11 | End User Training Manual and Write User Guide | 5d | 2018-07-09 A | 2018-07-13 A |  | 100% | start no earlier than 2018-07-09 | Nay La | 10h | 10h |
| 54 | 6.12 | Review/FinaliseUser Guide | 2d | 2018-08-16 A | 2018-08-17 A | 53 | 100% | start no earlier than 2018-08-16 | Bala; Kaung Myat Bo; Nay La; Treza; William | 20h | 20h |
| 55 | 6.13 | Perform User Acceptance Testing | 3d | 2018-08-20 A | 2018-08-22 A | 54 | 100% |  | Bala; Kaung Myat Bo; Nay La; Sponsor; Treza; William | 36h | 36h |
| 56 | 6.14 | Review Acceptance Test Result/Corrective Action | 2d | 2018-08-23 A | 2018-08-24 A | 55, 50 | 100% |  | Bala; Kaung Myat Bo; Nay La; Treza; William | 20h | 20h |
| 57 | 6.15 | Prepare User Acceptance Test Document | 5d | 2018-07-16 A | 2018-07-20 A |  | 100% | start no earlier than 2018-07-16 | Nay La | 10h | 10h |
| 58 | 6.16 | Review/FinaliseUser Acceptance Test Document | 1d | 2018-08-27 A | 2018-08-27 A | 57 | 100% | start no earlier than 2018-08-27 | Bala; Kaung Myat Bo; Nay La; Treza; William | 10h | 10h |

| ID | WBS | Task | Type | Duration | Start | Finish | Predecessors | Complete | Remaining | Total slack | Free slack | Constraint | Resources | Work | Actual work |
| --- | --- | --- | --- | --- | --- | --- | --- | --- | --- | --- | --- | --- | --- | --- | --- |
| 59 | 7 | **Revised Documentation for 2nd Audit** |  | 1d | 2018-08-28 A | 2018-08-28 A |  | 100% |  |  |  |  |  | 4h | 4h |
| 60 | 7.1 | Revised High Level Design Specification |  | 1d | 2018-08-28 A | 2018-08-28 A | 58 | 100% |  |  |  |  | Treza | 2h | 2h |
| 61 | 7.2 | Revised Project Plan |  | 1d | 2018-08-28 A | 2018-08-28 A | 58 | 100% |  |  |  |  | Kaung Myat Bo | 2h | 2h |
| 62 | 8 | **Incorporate Audit Feedbacks** |  | 4d | 2018-08-28 A | 2018-08-31 A |  | 100% |  |  |  |  |  | 32h | 32h |
| 63 | 8.1 | Revised on Audit Comment |  | 1d | 2018-08-28 A | 2018-08-28 A | 58 | 100% |  |  |  |  | Nay La | 2h | 2h |
| 64 | 8.2 | Prepare for Presentation | manual | 3d | 2018-08-29 A | 2018-08-31 A |  | 100% |  |  |  |  | Bala; Kaung Myat Bo; Nay La; Treza; William | 30h | 30h |
| 65 | 9 | **Analysis and Design Modelling (Increment 2)** |  | 32d | 2018-09-03 A | 2018-10-16 A |  | 100% |  |  |  |  |  | 294h | 294h |
| 66 | 9.1 | Produce Use Case Model Survey Report (Requirement) |  | 2d | 2018-09-03 A | 2018-09-04 A | 64 | 100% |  |  |  | start no earlier than 2018-05-03 | Kaung Myat Bo; Treza | 8h | 8h |
| 67 | 9.2 | Review/FinaliseUse Case Model Survey Report (Requirement) |  | 2d | 2018-09-10 A | 2018-09-11 A | 66 | 100% |  |  |  | start no earlier than 2018-09-10 | Bala | 4h | 4h |
| 68 | 9.3 | Identify Domain Objects/Attributes |  | 5d | 2018-09-03 A | 2018-09-07 A | 64 | 100% |  |  |  |  | Bala; Nay La; William | 30h | 30h |
| 69 | 9.4 | Produce Class Diagrams |  | 5d | 2018-09-05 A | 2018-09-11 A |  | 100% |  |  |  | start no earlier than 2018-09-05 | Kaung Myat Bo; Treza | 20h | 20h |
| 70 | 9.5 | Produce Sequence Diagrams |  | 22d | 2018-09-10 A | 2018-10-09 A |  | 100% |  |  |  | start no earlier than 2018-09-10 | William; Bala; Kaung Myat Bo; Nay La; Treza | 200h | 200h |
| 71 | 9.6 | Produce Design Model Report |  | 3d | 2018-10-10 A | 2018-10-12 A | 70 | 100% |  |  |  |  | William; Bala | 12h | 12h |
| 72 | 9.7 | Review/FinaliseDesign Model Report |  | 2d | 2018-10-15 A | 2018-10-16 A | 71 | 100% |  |  |  |  | Kaung Myat Bo; Treza; Bala; Nay La; William | 20h | 20h |
| 73 | 10 | **Programming (Increment 2)** |  | 30d | 2018-10-17 A | 2018-11-27 A |  | 100% |  |  |  |  |  | 240h | 240h |
| 74 | 10.1 | Backend coding |  | 25d | 2018-10-17 A | 2018-11-20 A | 72 | 100% |  |  |  |  | Treza; William | 100h | 100h |
| 75 | 10.2 | Frontend coding |  | 25d | 2018-10-17 A | 2018-11-20 A | 72 | 100% |  |  |  |  | Bala; Kaung Myat Bo | 100h | 100h |
| 76 | 10.3 | Unit Testing |  | 2d | 2018-11-26 A | 2018-11-27 A | 77 | 100% |  |  |  |  | Bala; Kaung Myat Bo; Treza; William | 16h | 16h |
| 77 | 10.4 | Peer Review of Coding |  | 3d | 2018-11-21 A | 2018-11-23 A | 75 | 100% |  |  |  |  | Bala; Kaung Myat Bo; Treza; William | 24h | 24h |
| 78 | 11 | **Testing (Increment 2)** |  | 55d | 2018-10-17 A | 2019-01-01 |  | 93% | 3.85d | 15d |  |  |  | 306h | 291h |
| 79 | 11.1 | Produce System Test Plan |  | 5d | 2018-10-17 A | 2018-10-23 A |  | 100% |  |  |  | start no earlier than 2018-10-17 | Nay La | 10h | 10h |
| 80 | 11.2 | Review/FinaliseSystem Test Plan |  | 2d | 2018-11-28 A | 2018-11-29 A | 79 | 100% |  |  |  | start no earlier than 2018-11-28 | Kaung Myat Bo; Bala; Nay La; William | 20h | 20h |
| 81 | 11.3 | Perform System Testing |  | 3d | 2018-11-30 A | 2018-12-04 A | 80 | 100% |  |  |  |  | Bala; Kaung Myat Bo; Nay La; William | 30h | 30h |
| 82 | 11.4 | Bug Review/Corrective action/Rework |  | 2d | 2018-12-05 A | 2018-12-06 A | 81 | 100% |  |  |  |  | Bala; Kaung Myat Bo; Nay La; William | 20h | 20h |
| 83 | 11.5 | Prepare SIT Document |  | 5d | 2018-10-24 A | 2018-10-30 A |  | 100% |  |  |  | start no earlier than 2018-10-24 | Nay La | 10h | 10h |
| 84 | 11.6 | Review/FinaliseSIT Document |  | 2d | 2018-12-07 A | 2018-12-10 A | 83 | 100% |  |  |  | start no earlier than 2018-12-07 | Bala; Kaung Myat Bo; Nay La; William | 20h | 20h |
| 85 | 11.7 | Prepare User Acceptance Test Plan |  | 5d | 2018-10-31 A | 2018-11-06 A |  | 100% |  |  |  | start no earlier than 2018-10-31 | Nay La | 10h | 10h |
| 86 | 11.8 | Review/FinaliseAcceptance Test Plan |  | 2d | 2018-12-19 A | 2018-12-20 A | 85 | 100% |  |  |  | start no earlier than 2018-12-19 | Bala; Kaung Myat Bo; Nay La; William | 20h | 20h |
| 87 | 11.9 | Perform Integration Testing with PT07 |  | 3d | 2018-12-11 A | 2018-12-13 A | 84 | 100% |  |  |  |  | Bala; Kaung Myat Bo; Nay La; William | 30h | 30h |
| 88 | 11.10 | Review Test Result and perform Corrective Action |  | 3d | 2018-12-14 A | 2018-12-18 A | 87 | 100% |  |  |  |  | Bala; Kaung Myat Bo; Nay La; William | 30h | 30h |
| 89 | 11.11 | End User Training Manual and Write User Guide |  | 5d | 2018-11-07 A | 2018-11-13 |  | 50% | 2.5d | 28d | 27d | start no earlier than 2018-11-07 | Nay La | 10h | 5h |
| 90 | 11.12 | Review/FinaliseUser Guide |  | 2d | 2018-12-21 A | 2018-12-24 | 89 | 50% | 1d | 21d |  | start no earlier than 2018-12-21 | Bala; Kaung Myat Bo; Nay La; William | 20h | 10h |
| 91 | 11.13 | Perform User Acceptance Testing |  | 3d | 2018-12-25 A | 2018-12-27 A | 90 | 100% |  |  |  |  | Bala; Kaung Myat Bo; Nay La; Sponsor; William | 36h | 36h |
| 92 | 11.14 | Review Acceptance Test Result/Corrective Action |  | 2d | 2018-12-28 A | 2018-12-31 A | 86, 91 | 100% |  |  |  |  | Bala; Kaung Myat Bo; Nay La; William | 20h | 20h |
| 93 | 11.15 | Prepare User Acceptance Test Document |  | 5d | 2018-11-14 A | 2018-11-20 A |  | 100% |  |  |  | start no earlier than 2018-11-14 | Nay La | 10h | 10h |
| 94 | 11.16 | Review/FinaliseUser Acceptance Test Document |  | 1d | 2019-01-01 A | 2019-01-01 A | 93 | 100% |  |  |  | start no earlier than 2019-01-01 | Bala; Kaung Myat Bo; Nay La; William | 10h | 10h |

| ID | WBS | Task | Duration | Start | Finish | Predecessors | Complete | Remaining | Total slack | Free slack | Constraint | Resources | Work | Actual work |
| --- | --- | --- | --- | --- | --- | --- | --- | --- | --- | --- | --- | --- | --- | --- |
| 95 | 12 | **Implementation** | 41d | 2018-11-21 A | 2019-01-16 |  | 86% | 5.58d | 4d |  |  |  | 106h | 93.5h |
| 96 | 12.1 | Source Deployment Process Guide | 5d | 2018-11-21 A | 2018-11-27 |  | 80% | 1d | 40d |  | start no earlier than 2018-11-21 | Nay La | 10h | 8h |
| 97 | 12.2 | AWS setup and manual | 2d | 2019-01-02 A | 2019-01-03 |  | 90% | 0.2d | 13d |  | start no earlier than 2019-01-02 | William; Kaung Myat Bo | 12h | 10.8h |
| 98 | 12.3 | Release Project | 1d | 2019-01-11 A | 2019-01-11 | 100 | 75% | 0.25d | 7d |  |  | Kaung Myat Bo | 2h | 1.5h |
| 99 | 12.4 | Prepare User Training | 2d | 2019-01-04 A | 2019-01-07 A | 97 | 100% |  |  |  |  | William; Bala; Kaung Myat Bo; Nay La | 20h | 20h |
| 100 | 12.5 | Training User | 3d | 2019-01-08 A | 2019-01-10 A | 99 | 100% |  |  |  |  | Kaung Myat Bo; William; Sponsor | 18h | 18h |
| 101 | 12.6 | Revised Documents and Sign-Off | 2d | 2019-01-02 A | 2019-01-03 |  | 80% | 0.4d | 8.4d | 6d | start no earlier than 2019-01-02 | Bala; Nay La | 8h | 6.4h |
| 102 | 12.7 | Project Hand-over | 3d | 2019-01-14 A | 2019-01-16 | 101, 100 | 80% | 0.6d | 1.5d | 0d | start no earlier than 2019-01-14 | Bala; Kaung Myat Bo; Nay La; Sponsor; William | 36h | 28.8h |
| 103 | 13 | **Incorporate Audit Feedbacks** | 4d | 2019-01-17 A | 2019-01-22 |  | 88% | 0.5d | 0d |  |  |  | 32h | 28h |
| 104 | 13.1 | Revised on Audit Comment | 2d | 2019-01-17 A | 2019-01-18 | 102 | 75% | 0.5d | 2d |  |  | Bala; Kaung Myat Bo; William; Nay La | 16h | 12h |
| 105 | 13.2 | Prepare for Presentation | 2d | 2019-01-21 A | 2019-01-22 A | 104 | 100% |  |  |  |  | Bala; Kaung Myat Bo; Nay La; William | 16h | 16h |
