# MH_RAM

Schedule from MS Project, 2018-02-01 to 2019-01-22, 2 hours a day, A marks actual dates.

## Calendars

- Standard: Mon-Fri 08:00-12:00, 13:00-17:00; Sat-Sun off. Exceptions (off unless hours are given): 2018-01-01 to 2019-07-08 20:00-21:00, 22:00-23:00 (2 HR/DAY working hrs, recurring).

## Resources

| Resource |
| --- |
| Kaung Myat Bo |
| Bala |
| Treza |
| Nay La |
| William |
| Sponsor |
| Agnes |

## Schedule

| ID | WBS | Task | Duration | Start | Finish | Predecessors | Complete | Constraint | Resources | Work | Actual work |
| --- | --- | --- | --- | --- | --- | --- | --- | --- | --- | --- | --- |
| 1 | 1 | **Project Initiation** | 52d | 2018-02-01 A | 2018-04-13 A |  | 100% |  |  | 428h | 428h |
| 2 | 1.1 | Setup project filing system | 7d | 2018-02-01 A | 2018-02-09 A |  | 100% |  | Nay La | 14h | 14h |
| 3 | 1.2 | Project requirement gathering | 20d | 2018-02-01 A | 2018-02-28 A |  | 100% |  | Kaung Myat Bo; Sponsor; Treza; Agnes | 160h | 160h |
| 4 | 1.3 | Project risk tracker | 5d | 2018-03-01 A | 2018-03-07 A |  | 100% | start no earlier than 2018-03-01 | Bala | 10h | 10h |
| 5 | 1.4 | Prepare WBS | 5d | 2018-03-01 A | 2018-03-07 A | 3 | 100% |  | Kaung Myat Bo | 10h | 10h |
| 6 | 1.5 | Produce project plan document | 5d | 2018-03-20 A | 2018-03-28 A | 5 | 100% | start no earlier than 2018-03-20 | Kaung Myat Bo | 10h | 10h |
| 7 | 1.6 | Review/Finalize project plan document | 2d | 2018-03-29 A | 2018-03-30 A | 6 | 100% |  | Bala; Nay La; Sponsor; Treza; William | 20h | 20h |
| 8 | 1.7 | Produce quality plan | 5d | 2018-02-12 A | 2018-02-16 A | 2 | 100% |  | Nay La | 10h | 10h |
| 9 | 1.8 | Review/Finalize quality plan | 1d | 2018-03-08 A | 2018-03-08 A | 4 | 100% |  | Bala; Kaung Myat Bo; Nay La; Treza; William | 10h | 10h |
| 10 | 1.9 | Produce User requirement specification | 10d | 2018-03-09 A | 2018-03-22 A | 9 | 100% |  | Bala | 20h | 20h |
| 11 | 1.10 | Review/Finalize User requirement specification | 2d | 2018-03-23 A | 2018-03-26 A | 10 | 100% |  | Kaung Myat Bo; Nay La; Sponsor; Treza; William | 20h | 20h |
| 12 | 1.11 | Produce Use Case Modelling survey report | 10d | 2018-03-29 A | 2018-04-11 A | 6 | 100% |  | Kaung Myat Bo | 20h | 20h |
| 13 | 1.12 | Review/Finalize Use Case Modelling survey report | 2d | 2018-04-12 A | 2018-04-13 A | 12 | 100% |  | Bala; Nay La; Sponsor; Treza; William | 20h | 20h |
| 14 | 1.13 | Produce User Interface Speficication 1 | 10d | 2018-03-09 A | 2018-03-22 A | 9 | 100% |  | Nay La | 20h | 20h |
| 15 | 1.14 | Review/Finalize User Interface Specification | 2d | 2018-03-27 A | 2018-03-28 A | 11 | 100% |  | Bala; Treza; William | 12h | 12h |
| 16 | 1.15 | Produce High Level Design Specification | 10d | 2018-03-01 A | 2018-03-15 A | 3 | 100% |  | Treza | 20h | 20h |
| 17 | 1.16 | Review/Finalize High Level Design Specification | 2d | 2018-03-16 A | 2018-03-19 A | 16 | 100% |  | Kaung Myat Bo; Sponsor; William | 12h | 12h |
| 18 | 1.17 | Exploring AWS services | 20d | 2018-03-01 A | 2018-04-10 A | 3 | 100% |  | William | 40h | 40h |
| 19 | 2 | **Build Prototype** | 9d | 2018-04-16 A | 2018-04-26 A |  | 100% |  |  | 50h | 50h |
| 20 | 2.1 | Prepare prototype | 5d | 2018-04-16 A | 2018-04-20 A | 13 | 100% |  | William; Kaung Myat Bo; Treza | 30h | 30h |
| 21 | 2.2 | Test prototype | 2d | 2018-04-23 A | 2018-04-24 A | 20 | 100% |  | Bala; Nay La | 8h | 8h |
| 22 | 2.3 | Produce Prototype Study Report | 2d | 2018-04-23 A | 2018-04-24 A | 20 | 100% |  | William | 4h | 4h |
| 23 | 2.4 | Review/Finalize Prototype Study Report | 2d | 2018-04-25 A | 2018-04-26 A | 22 | 100% |  | Treza; Bala | 8h | 8h |
| 24 | 3 | **Incorporate Audit Feedbacks** | 4d | 2018-04-27 A | 2018-05-02 A |  | 100% |  |  | 40h | 40h |
| 25 | 3.1 | Revised on Audit Comments | 1d | 2018-04-27 A | 2018-04-27 A | 23 | 100% |  | Kaung Myat Bo; Nay La; Treza; Bala; William | 10h | 10h |
| 26 | 3.2 | Prepare for presentation | 3d | 2018-04-30 A | 2018-05-02 A | 25 | 100% |  | Bala; Kaung Myat Bo; Nay La; Treza; William | 30h | 30h |

| ID | WBS | Task | Duration | Start | Finish | Predecessors | Complete | Remaining | Total slack | Free slack | Constraint | Resources | Work | Actual work |
| --- | --- | --- | --- | --- | --- | --- | --- | --- | --- | --- | --- | --- | --- | --- |
| 27 | 4 | **Analysis and Design Modelling (Increment 1)** | 32d | 2018-05-03 A | 2018-06-15 |  | 97% | 1.03d | 157d |  |  |  | 294h | 286h |
| 28 | 4.1 | Produce Use Case Model Survey Report (Requirement) | 2d | 2018-05-03 A | 2018-05-04 A |  | 100% |  |  |  | start no earlier than 2018-05-03 | Kaung Myat Bo; Treza | 8h | 8h |
| 29 | 4.2 | Review/FinaliseUse Case Model Survey Report (Requirement) | 2d | 2018-05-10 A | 2018-05-11 A | 28 | 100% |  |  |  | start no earlier than 2018-05-10 | Bala | 4h | 4h |
| 30 | 4.3 | Identify Domain Objects/Attributes | 5d | 2018-05-03 A | 2018-05-09 A | 26 | 100% |  |  |  |  | Bala; Nay La; William | 30h | 30h |
| 31 | 4.4 | Produce Class Diagrams | 5d | 2018-05-07 A | 2018-05-11 A |  | 100% |  |  |  | start no earlier than 2018-05-07 | Kaung Myat Bo; Treza | 20h | 20h |
| 32 | 4.5 | Produce Sequence Diagrams | 20d | 2018-05-14 A | 2018-06-08 A |  | 100% |  |  |  | start no earlier than 2018-05-14 | William; Bala; Kaung Myat Bo; Nay La; Treza | 200h | 200h |
| 33 | 4.6 | Produce Design Model Report | 3d | 2018-06-11 A | 2018-06-13 | 32, 30, 31 | 75% | 0.75d | 1.5d | 0d |  | William; Bala | 12h | 9h |
| 34 | 4.7 | Review/FinaliseDesign Model Report | 2d | 2018-06-14 A | 2018-06-15 | 33 | 75% | 0.5d | 157d |  |  | Kaung Myat Bo; Treza; Bala; Nay La; William | 20h | 15h |
| 35 | 5 | **Implementation & Coding** | 52d | 2018-05-10 A | 2018-07-20 |  | 97% | 1.82d | 132d |  |  |  | 226h | 214h |
| 36 | 5.1 | Setup necessary cloud environment | 2d | 2018-05-10 A | 2018-05-11 |  | 75% | 0.5d | 182d |  | start no earlier than 2018-05-10 | Nay La; William | 8h | 6h |
| 37 | 5.2 | Source control plan and setup | 3d | 2018-06-11 A | 2018-06-13 A |  | 100% |  |  |  | start no earlier than 2018-06-11 | Kaung Myat Bo; Treza; Nay La | 18h | 18h |
| 38 | 5.3 | Backend coding | 20d | 2018-06-18 A | 2018-07-13 A | 32, 33 | 100% |  |  |  | start no earlier than 2018-06-18 | Treza; William | 80h | 80h |
| 39 | 5.4 | Frontend coding | 20d | 2018-06-18 A | 2018-07-13 A | 32, 33 | 100% |  |  |  | start no earlier than 2018-06-18 | Kaung Myat Bo; Bala | 80h | 80h |
| 40 | 5.5 | Unit testing | 2d | 2018-07-19 A | 2018-07-20 | 41 | 75% | 0.5d | 132d |  |  | Bala; Kaung Myat Bo; Treza; William | 16h | 12h |
| 41 | 5.6 | Peer review coding | 3d | 2018-07-16 A | 2018-07-18 | 38, 39 | 75% | 0.75d | 1.5d | 0d |  | Bala; Kaung Myat Bo; Treza; William | 24h | 18h |
| 42 | 6 | **Testing** | 51d | 2018-06-18 A | 2018-08-27 |  | 22% | 39.78d | 106d |  |  |  | 306h | 60h |
| 43 | 6.1 | Produce System Test Plan | 5d | 2018-06-18 A | 2018-06-22 |  | 75% | 1.25d | 21d | 20d | start no earlier than 2018-06-18 | Nay La | 10h | 7.5h |
| 44 | 6.2 | Review/FinaliseSystem Test Plan | 2d | 2018-07-23 A | 2018-07-24 | 43 | 50% | 1d | 0.75d | 0d | start no earlier than 2018-07-23 | Treza; Kaung Myat Bo; Bala; Nay La; William | 20h | 10h |
| 45 | 6.3 | Perform System Testing | 3d | 2018-07-25 A | 2018-07-27 | 44 | 25% | 2.25d | 0.5d | 0d |  | Bala; Kaung Myat Bo; Nay La; Treza; William | 30h | 7.5h |
| 46 | 6.4 | Bug Review/Corrective action/Rework | 2d | 2018-07-30 A | 2018-07-31 | 45 | 25% | 1.5d | 125d |  |  | Bala; Kaung Myat Bo; Nay La; Treza; William | 20h | 5h |
| 47 | 6.5 | Prepare SIT Document | 5d | 2018-06-25 A | 2018-06-29 |  | 25% | 3.75d | 22.5d | 22d | start no earlier than 2018-06-25 | Nay La | 10h | 2.5h |
| 48 | 6.6 | Review/FinaliseSIT Document | 2d | 2018-08-01 A | 2018-08-02 | 47 | 25% | 1.5d | 0.75d | 0d | start no earlier than 2018-08-01 | Bala; Kaung Myat Bo; Nay La; Treza; William | 20h | 5h |
| 49 | 6.7 | Prepare User Acceptance Test Plan | 5d | 2018-07-02 A | 2018-07-06 |  | 25% | 3.75d | 25.5d | 25d | start no earlier than 2018-07-02 | Nay La | 10h | 2.5h |
| 50 | 6.8 | Review/FinaliseAcceptance Test Plan | 2d | 2018-08-13 A | 2018-08-14 | 49 | 25% | 1.5d | 113d | 6d | start no earlier than 2018-08-13 | Bala; Kaung Myat Bo; Nay La; Treza; William | 20h | 5h |
| 51 | 6.9 | Perform Integration Testing | 3d | 2018-08-03 A | 2018-08-07 | 48 | 25% | 2.25d | 0.75d | 0d |  | Bala; Kaung Myat Bo; Nay La; Treza; William | 30h | 7.5h |
| 52 | 6.10 | Review Test Result and perform Corrective Action | 3d | 2018-08-08 A | 2018-08-10 | 51 | 25% | 2.25d | 117d |  |  | Bala; Kaung Myat Bo; Nay La; Treza; William | 30h | 7.5h |
| 53 | 6.11 | End User Training Manual and Write User Guide | 5d | 2018-07-09 | 2018-07-13 |  |  |  | 130d | 23d | start no earlier than 2018-07-09 | Nay La | 10h |  |
| 54 | 6.12 | Review/FinaliseUser Guide | 2d | 2018-08-16 | 2018-08-17 | 53 |  |  | 107d | 0d | start no earlier than 2018-08-16 | Bala; Kaung Myat Bo; Nay La; Treza; William | 20h |  |
| 55 | 6.13 | Perform User Acceptance Testing | 3d | 2018-08-20 | 2018-08-22 | 54 |  |  | 107d | 0d |  | Bala; Kaung Myat Bo; Nay La; Sponsor; Treza; William | 36h |  |
| 56 | 6.14 | Review Acceptance Test Result/Corrective Action | 2d | 2018-08-23 | 2018-08-24 | 55, 50 |  |  | 107d |  |  | Bala; Kaung Myat Bo; Nay La; Treza; William | 20h |  |
| 57 | 6.15 | Prepare User Acceptance Test Document | 5d | 2018-07-16 | 2018-07-20 |  |  |  | 25.25d | 25d | start no earlier than 2018-07-16 | Nay La | 10h |  |
| 58 | 6.16 | Review/FinaliseUser Acceptance Test Document | 1d | 2018-08-27 | 2018-08-27 | 57 |  |  | 0.25d | 0d | start no earlier than 2018-08-27 | Bala; Kaung Myat Bo; Nay La; Treza; William | 10h |  |

| ID | WBS | Task | Type | Duration | Start | Finish | Predecessors | Complete | Remaining | Total slack | Free slack | Constraint | Resources | Work | Actual work |
| --- | --- | --- | --- | --- | --- | --- | --- | --- | --- | --- | --- | --- | --- | --- | --- |
| 59 | 7 | **Revised Documentation for 2nd Audit** |  | 1d | 2018-08-28 A | 2018-08-28 |  | 75% | 0.25d | 105d |  |  |  | 4h | 3h |
| 60 | 7.1 | Revised High Level Design Specification |  | 1d | 2018-08-28 A | 2018-08-28 A | 58 | 100% |  |  |  |  | Treza | 2h | 2h |
| 61 | 7.2 | Revised Project Plan |  | 1d | 2018-08-28 A | 2018-08-28 | 58 | 50% | 0.5d | 105d |  |  | Kaung Myat Bo | 2h | 1h |
| 62 | 8 | **Incorporate Audit Feedbacks** |  | 4d | 2018-08-28 A | 2018-08-31 |  | 81% | 0.75d | 102d |  |  |  | 32h | 30.5h |
| 63 | 8.1 | Revised on Audit Comment |  | 1d | 2018-08-28 A | 2018-08-28 | 58 | 25% | 0.75d | 105d |  |  | Nay La | 2h | 0.5h |
| 64 | 8.2 | Prepare for Presentation | manual | 3d | 2018-08-29 A | 2018-08-31 A |  | 100% |  |  |  |  | Bala; Kaung Myat Bo; Nay La; Treza; William | 30h | 30h |
| 65 | 9 | **Analysis and Design Modelling (Increment 2)** |  | 32d | 2018-09-03 | 2018-10-16 |  |  |  | 45d |  |  |  | 294h |  |
| 66 | 9.1 | Produce Use Case Model Survey Report (Requirement) |  | 2d | 2018-09-03 | 2018-09-04 | 64 |  |  | 98d | 3d | start no earlier than 2018-05-03 | Kaung Myat Bo; Treza | 8h |  |
| 67 | 9.2 | Review/FinaliseUse Case Model Survey Report (Requirement) |  | 2d | 2018-09-10 | 2018-09-11 | 66 |  |  | 95d |  | start no earlier than 2018-09-10 | Bala | 4h |  |
| 68 | 9.3 | Identify Domain Objects/Attributes |  | 5d | 2018-09-03 | 2018-09-07 | 64 |  |  | 97d |  |  | Bala; Nay La; William | 30h |  |
| 69 | 9.4 | Produce Class Diagrams |  | 5d | 2018-09-05 | 2018-09-11 |  |  |  | 95d |  | start no earlier than 2018-09-05 | Kaung Myat Bo; Treza | 20h |  |
| 70 | 9.5 | Produce Sequence Diagrams |  | 22d | 2018-09-10 | 2018-10-09 |  |  |  | 40d | 0d | start no earlier than 2018-09-10 | William; Bala; Kaung Myat Bo; Nay La; Treza | 200h |  |
| 71 | 9.6 | Produce Design Model Report |  | 3d | 2018-10-10 | 2018-10-12 | 70 |  |  | 40d | 0d |  | William; Bala | 12h |  |
| 72 | 9.7 | Review/FinaliseDesign Model Report |  | 2d | 2018-10-15 | 2018-10-16 | 71 |  |  | 40d | 0d |  | Kaung Myat Bo; Treza; Bala; Nay La; William | 20h |  |
| 73 | 10 | **Programming (Increment 2)** |  | 30d | 2018-10-17 | 2018-11-27 |  |  |  | 40d |  |  |  | 240h |  |
| 74 | 10.1 | Backend coding |  | 25d | 2018-10-17 | 2018-11-20 | 72 |  |  | 45d |  |  | Treza; William | 100h |  |
| 75 | 10.2 | Frontend coding |  | 25d | 2018-10-17 | 2018-11-20 | 72 |  |  | 40d | 0d |  | Bala; Kaung Myat Bo | 100h |  |
| 76 | 10.3 | Unit Testing |  | 2d | 2018-11-26 | 2018-11-27 | 77 |  |  | 40d |  |  | Bala; Kaung Myat Bo; Treza; William | 16h |  |
| 77 | 10.4 | Peer Review of Coding |  | 3d | 2018-11-21 | 2018-11-23 | 75 |  |  | 40d | 0d |  | Bala; Kaung Myat Bo; Treza; William | 24h |  |
| 78 | 11 | **Testing (Increment 2)** |  | 55d | 2018-10-17 | 2019-01-01 |  |  |  | 15d |  |  |  | 306h |  |
| 79 | 11.1 | Produce System Test Plan |  | 5d | 2018-10-17 | 2018-10-23 |  |  |  | 58d | 25d | start no earlier than 2018-10-17 | Nay La | 10h |  |
| 80 | 11.2 | Review/FinaliseSystem Test Plan |  | 2d | 2018-11-28 | 2018-11-29 | 79 |  |  | 33d | 0d | start no earlier than 2018-11-28 | Treza; Kaung Myat Bo; Bala; Nay La; William | 20h |  |
| 81 | 11.3 | Perform System Testing |  | 3d | 2018-11-30 | 2018-12-04 | 80 |  |  | 33d | 0d |  | Bala; Kaung Myat Bo; Nay La; Treza; William | 30h |  |
| 82 | 11.4 | Bug Review/Corrective action/Rework |  | 2d | 2018-12-05 | 2018-12-06 | 81 |  |  | 33d |  |  | Bala; Kaung Myat Bo; Nay La; Treza; William | 20h |  |
| 83 | 11.5 | Prepare SIT Document |  | 5d | 2018-10-24 | 2018-10-30 |  |  |  | 52d | 27d | start no earlier than 2018-10-24 | Nay La | 10h |  |
| 84 | 11.6 | Review/FinaliseSIT Document |  | 2d | 2018-12-07 | 2018-12-10 | 83 |  |  | 25d | 0d | start no earlier than 2018-12-07 | Bala; Kaung Myat Bo; Nay La; Treza; William | 20h |  |
| 85 | 11.7 | Prepare User Acceptance Test Plan |  | 5d | 2018-10-31 | 2018-11-06 |  |  |  | 51d | 30d | start no earlier than 2018-10-31 | Nay La | 10h |  |
| 86 | 11.8 | Review/FinaliseAcceptance Test Plan |  | 2d | 2018-12-19 | 2018-12-20 | 85 |  |  | 21d | 5d | start no earlier than 2018-12-19 | Bala; Kaung Myat Bo; Nay La; Treza; William | 20h |  |
| 87 | 11.9 | Perform Integration Testing with PT07 |  | 3d | 2018-12-11 | 2018-12-13 | 84 |  |  | 25d | 0d |  | Bala; Kaung Myat Bo; Nay La; Treza; William | 30h |  |
| 88 | 11.10 | Review Test Result and perform Corrective Action |  | 3d | 2018-12-14 | 2018-12-18 | 87 |  |  | 25d |  |  | Bala; Kaung Myat Bo; Nay La; Treza; William | 30h |  |
| 89 | 11.11 | End User Training Manual and Write User Guide |  | 5d | 2018-11-07 | 2018-11-13 |  |  |  | 43d | 27d | start no earlier than 2018-11-07 | Nay La | 10h |  |
| 90 | 11.12 | Review/FinaliseUser Guide |  | 2d | 2018-12-21 | 2018-12-24 | 89 |  |  | 16d | 0d | start no earlier than 2018-12-21 | Bala; Kaung Myat Bo; Nay La; Treza; William | 20h |  |
| 91 | 11.13 | Perform User Acceptance Testing |  | 3d | 2018-12-25 | 2018-12-27 | 90 |  |  | 16d | 0d |  | Bala; Kaung Myat Bo; Nay La; Sponsor; Treza; William | 36h |  |
| 92 | 11.14 | Review Acceptance Test Result/Corrective Action |  | 2d | 2018-12-28 | 2018-12-31 | 86, 91 |  |  | 16d |  |  | Bala; Kaung Myat Bo; Nay La; Treza; William | 20h |  |
| 93 | 11.15 | Prepare User Acceptance Test Document |  | 5d | 2018-11-14 | 2018-11-20 |  |  |  | 44d | 29d | start no earlier than 2018-11-14 | Nay La | 10h |  |
| 94 | 11.16 | Review/FinaliseUser Acceptance Test Document |  | 1d | 2019-01-01 | 2019-01-01 | 93 |  |  | 15d |  | start no earlier than 2019-01-01 | Bala; Kaung Myat Bo; Nay La; Treza; William | 10h |  |

| ID | WBS | Task | Duration | Start | Finish | Predecessors | Total slack | Free slack | Constraint | Resources | Work |
| --- | --- | --- | --- | --- | --- | --- | --- | --- | --- | --- | --- |
| 95 | 12 | **Implementation** | 41d | 2018-11-21 | 2019-01-16 |  | 4d |  |  |  | 112h |
| 96 | 12.1 | Source Deployment Process Guide | 5d | 2018-11-21 | 2018-11-27 |  | 40d |  | start no earlier than 2018-11-21 | Nay La | 10h |
| 97 | 12.2 | AWS setup and manual | 2d | 2019-01-02 | 2019-01-03 |  | 1d | 0d | start no earlier than 2019-01-02 | Treza; William; Kaung Myat Bo | 12h |
| 98 | 12.3 | Release Project | 1d | 2019-01-11 | 2019-01-11 | 100 | 7d |  |  | Kaung Myat Bo | 2h |
| 99 | 12.4 | Prepare User Training | 2d | 2019-01-04 | 2019-01-07 | 97 | 1d | 0d |  | Treza; William; Bala; Kaung Myat Bo; Nay La | 20h |
| 100 | 12.5 | Training User | 3d | 2019-01-08 | 2019-01-10 | 99 | 1d | 0d |  | Kaung Myat Bo; William; Sponsor; Treza | 24h |
| 101 | 12.6 | Revised Documents and Sign-Off | 2d | 2019-01-02 | 2019-01-03 |  | 6d |  | start no earlier than 2019-01-02 | Bala; Nay La | 8h |
| 102 | 12.7 | Project Hand-over | 3d | 2019-01-14 | 2019-01-16 | 101, 100 | 0d |  | start no earlier than 2019-01-14 | Bala; Kaung Myat Bo; Nay La; Sponsor; Treza; William | 36h |
| 103 | 13 | **Incorporate Audit Feedbacks** | 4d | 2019-01-17 | 2019-01-22 |  | 0d |  |  |  | 40h |
| 104 | 13.1 | Revised on Audit Comment | 2d | 2019-01-17 | 2019-01-18 | 102 | 0d |  |  | Bala; Kaung Myat Bo; Treza; William; Nay La | 20h |
| 105 | 13.2 | Prepare for Presentation | 2d | 2019-01-21 | 2019-01-22 | 104 | 0d |  |  | Bala; Kaung Myat Bo; Nay La; Treza; William | 20h |
